# 1E35-90-003 (barchart)

Schedule from MS Project, 2009-09-14 to 2010-12-31, A marks actual dates.
Desmet Ballestra S.p.A.

## Calendars

- Standard: Mon-Fri 09:00-13:00, 14:00-18:00; Sat-Sun off. Exceptions (off unless hours are given): 2010-07-31 09:00-13:00, 14:00-18:00.

## Schedule

| ID | WBS | Task | Type | Duration | Start | Finish | Complete | Remaining | Total slack | Constraint |
| --- | --- | --- | --- | --- | --- | --- | --- | --- | --- | --- |
| 1 | 1 | Contract Signature (14/09/2009) |  | 1d | 2009-09-14 A | 2009-09-14 A | 100% |  |  | finish no earlier than 2009-09-16 |
| 2 | 2 | Down payment received (23/10/2009) |  | 17d | 2009-10-01 A | 2009-10-23 A | 100% |  |  | finish no earlier than 2009-10-23 |
| 3 | 3 | Job coming in force (26/10/2009) | milestone | 0d | 2010-04-20 A | 2010-04-20 A | 100% |  |  |  |
| 4 | 4 | L/C opening | milestone | 0d | 2010-04-20 | 2010-04-20 |  |  | 185d | start no earlier than 2010-04-20 |
| 5 | 5 | **BASIC ENGINERING** |  | 58d | 2010-04-27 A | 2010-07-15 | 33% | 39.03d | 122d |  |
| 6 | 5.1 | Raw materials / Utilities specification |  | 20d | 2010-06-18 | 2010-07-15 |  |  | 122d | finish no earlier than 2010-07-15 |
| 7 | 5.2 | P&I Diagrams |  | 29d | 2010-04-27 | 2010-06-04 |  |  | 151d | finish no earlier than 2010-06-04 |
| 8 | 5.3 | Lines list |  | 15d | 2010-05-17 A | 2010-06-04 | 73% | 4d | 151d | finish no earlier than 2010-06-04 |
| 9 | 5.4 | Materials & Thermal balance |  | 53d | 2010-05-04 | 2010-07-15 |  |  | 122d | finish no earlier than 2010-07-15 |
| 10 | 5.5 | Preliminary Plot plan |  | 15d | 2010-05-18 A | 2010-06-07 | 1% | 14.9d | 150d | finish no earlier than 2010-06-07 |
| 11 | 5.6 | Plot Plan approval (by client) |  | 7d | 2010-06-07 | 2010-06-15 |  |  | 144d | start no earlier than 2010-06-07 |
| 12 | 5.7 | Process Equipment specifications |  | 24d | 2010-05-04 A | 2010-06-04 | 83% | 4d | 151d | finish no earlier than 2010-06-04 |
| 13 | 5.8 | Process Machinery specifications |  | 24d | 2010-05-04 A | 2010-06-04 | 83% | 4d | 151d | finish no earlier than 2010-06-04 |
| 14 | 5.9 | Process Instruments specifications |  | 22d | 2010-05-06 A | 2010-06-04 | 82% | 4d | 151d | finish no earlier than 2010-06-04 |
| 15 | 5.10 | Item Index & scope of supply list |  | 12d | 2010-05-12 A | 2010-05-27 A | 100% |  |  | finish no earlier than 2009-11-23 |
| 16 | 5.11 | Process piping class specification |  | 7d | 2010-05-27 | 2010-06-04 |  |  | 151d | finish no earlier than 2010-06-04 |
| 17 | 5.12 | Software Specification (URS) |  | 20d | 2010-06-03 | 2010-06-30 |  |  | 0d | must finish on 2010-06-30 |
| 18 | 6 | **DETAIL ENGINEERING** |  | 142d | 2010-05-17 A | 2010-11-29 | 33% | 94.98d | 24d |  |
| 19 | 6.1 | Piping class specification with attachments |  | 15d | 2010-05-20 A | 2010-06-09 A | 100% |  |  | finish no earlier than 2009-12-04 |
| 20 | 6.2 | Equipment Data sheets |  | 55d | 2010-05-17 A | 2010-07-30 | 27% | 40d | 111d | finish no earlier than 2010-07-30 |
| 21 | 6.3 | Equipment Construction dwg.s. (DBI) |  | 42d | 2010-06-03 A | 2010-07-30 | 36% | 27d | 111d | finish no earlier than 2010-07-30 |
| 22 | 6.4 | Equipment Construction dwg.s.(SMU) |  | 24d | 2010-08-30 | 2010-09-30 |  |  | 66d | start no earlier than 2010-08-30 |
| 23 | 6.5 | Final plot plan |  | 14d | 2010-06-15 A | 2010-07-02 | 64% | 5d | 131d | finish no earlier than 2010-07-02 |
| 24 | 6.6 | Utilities diagram |  | 7d | 2010-07-09 A | 2010-07-19 | 86% | 1d | 120d | finish no earlier than 2010-07-19 |
| 25 | 6.7 | Steel Structures dwg.s |  | 24d | 2010-08-30 A | 2010-09-30 A | 100% |  |  | start no earlier than 2009-11-30 |
| 26 | 6.8 | Preliminary Foundation plans |  | 20d | 2010-06-21 A | 2010-07-16 A | 100% |  |  | finish no earlier than 2010-01-22 |
| 27 | 6.9 | Final Foundation plans |  | 43d | 2010-07-20 A | 2010-09-15 | 28% | 31d | 77d | finish no earlier than 2010-09-15 |
| 28 | 6.10 | Anchor Bolts list |  | 49d | 2010-07-12 A | 2010-09-15 | 12% | 43d | 77d | finish no earlier than 2010-09-15 |
| 29 | 6.11 | Piping arrangement dwg.s |  | 68d | 2010-06-30 A | 2010-09-30 | 48% | 35.5d | 66d | finish no earlier than 2010-09-30 |
| 30 | 6.12 | Piping Support layout dwg.s |  | 33d | 2010-09-15 | 2010-10-29 |  |  | 45d | finish no earlier than 2010-10-29 |
| 31 | 6.13 | Piping Support list |  | 15d | 2010-10-11 | 2010-10-29 |  |  | 45d | finish no earlier than 2010-10-29 |
| 32 | 6.14 | Valve list (DBI) |  | 12d | 2010-06-30 A | 2010-07-15 | 83% | 2d | 122d | finish no earlier than 2010-07-15 |
| 33 | 6.15 | Sz. Preliminary Piping MTO list (DBI) |  | 15d | 2010-08-12 | 2010-09-01 |  |  | 87d | finish no earlier than 2010-09-01 |
| 34 | 6.16 | Sz. Piping MTO list (SMU) |  | 15d | 2010-08-31 | 2010-09-20 |  |  | 74d | finish no earlier than 2010-09-20 |
| 35 | 6.17 | Final Piping MTO list (DBI) |  | 15d | 2010-08-31 | 2010-09-20 |  |  | 74d | finish no earlier than 2010-09-20 |
| 36 | 6.18 | Special "Y" pieces (DBI), expansion joints etc. |  | 35d | 2010-08-03 A | 2010-09-20 | 97% | 1d | 74d | finish no earlier than 2010-09-15 |
| 37 | 6.19 | Thermal insulation MTO. |  | 10d | 2010-10-18 | 2010-10-29 |  |  | 45d | finish no earlier than 2010-10-29 |
| 38 | 6.20 | Electric loads list |  | 31d | 2010-07-20 A | 2010-08-30 | 16% | 26d | 89d | finish no earlier than 2010-08-30 |
| 39 | 6.21 | Electric power distribution panel specification |  | 10d | 2010-06-25 A | 2010-07-08 |  | 10d | 127d | finish no earlier than 2010-07-08 |
| 40 | 6.22 | Electrical / Instruments distribution layout |  | 20d | 2010-10-04 A | 2010-10-29 | 19% | 16.3d | 45d | finish no earlier than 2010-10-29 |
| 41 | 6.23 | Electrical / Instrument cables specification |  | 20d | 2010-10-04 A | 2010-10-29 | 10% | 18.1d | 45d | finish no earlier than 2010-10-29 |
| 42 | 6.24 | Electrical wiring diagram |  | 17d | 2010-11-05 A | 2010-11-29 | 10% | 15.3d | 24d | start no earlier than 2010-05-03 |
| 43 | 6.25 | Instruments data sheets |  | 57d | 2010-06-15 A | 2010-08-31 | 35% | 37d | 88d | finish no earlier than 2010-08-31 |
| 44 | 6.26 | Hook-up material for instruments (DBI) |  | 12d | 2010-09-15 A | 2010-09-30 | 16% | 10.1d | 66d | finish no earlier than 2010-09-30 |
| 45 | 6.27 | Electrical / Instrument assembling materials (SMU) |  | 15d | 2010-10-11 | 2010-10-29 |  |  | 45d | finish no earlier than 2010-10-29 |
| 46 | 6.28 | I/O list for CCS |  | 5d | 2010-06-28 A | 2010-07-02 A | 100% |  |  | finish no earlier than 2010-01-18 |
| 47 | 6.29 | CCS specification |  | 7d | 2010-07-05 A | 2010-07-13 A | 100% |  |  | finish no earlier than 2010-01-29 |
| 48 | 6.30 | Motor and electric user connection sketches |  | 13d | 2010-10-13 A | 2010-10-29 | 15% | 11.1d | 45d | finish no earlier than 2010-10-29 |
| 49 | 6.31 | Instruments connection sketches |  | 15d | 2010-10-11 A | 2010-10-29 | 15% | 12.7d | 45d | finish no earlier than 2010-10-29 |
| 50 | 6.32 | Instruments list |  | 34d | 2010-07-15 A | 2010-08-30 | 15% | 28.9d | 89d | finish no earlier than 2010-08-30 |

| ID | WBS | Task | Duration | Start | Finish | Complete | Remaining | Total slack | Constraint |
| --- | --- | --- | --- | --- | --- | --- | --- | --- | --- |
| 51 | 7 | **PROCUREMENT / CONSTRUCTION ACTIVITIES** | 144d | 2010-05-14 A | 2010-11-30 | 31% | 99.06d | 23d |  |
| 52 | 7.1 | Equipment RdO. (material requisition issue) | 23d | 2010-05-14 A | 2010-06-15 | 87% | 3d | 144d | finish no earlier than 2010-06-15 |
| 53 | 7.2 | Equipment RdA. (issue order) | 26d | 2010-05-14 A | 2010-06-18 |  | 26d | 141d | start no earlier than 2010-01-07 |
| 54 | 7.3 | Equipment construction | 140d | 2010-05-20 A | 2010-11-30 | 16% | 118d | 23d | finish no earlier than 2010-11-30 |
| 55 | 7.4 | Machinery RdO. | 44d | 2010-05-17 A | 2010-07-15 | 34% | 29d | 122d | finish no earlier than 2010-07-15 |
| 56 | 7.5 | Machinery RdA. | 51d | 2010-05-20 A | 2010-07-30 | 18% | 42d | 111d | finish no earlier than 2010-07-30 |
| 57 | 7.6 | Machinery procurement | 138d | 2010-05-24 A | 2010-11-30 | 32% | 94d | 23d | finish no earlier than 2010-11-30 |
| 58 | 7.7 | Valve list (DBI) RdO./RdA. | 12d | 2010-07-15 A | 2010-07-30 A | 100% |  |  | finish no earlier than 2010-02-05 |
| 59 | 7.8 | Valve list (DBI) procurement | 89d | 2010-07-30 A | 2010-11-30 | 58% | 37d | 23d | finish no earlier than 2010-11-30 |
| 60 | 7.9 | Preliminary piping MTO list (DBI) RdO. / RdA. | 6d | 2010-09-01 A | 2010-09-08 | 93% | 0.4d | 82d | finish no earlier than 2010-09-08 |
| 61 | 7.10 | Preliminary Piping MTO (DBI) procurement | 36d | 2010-09-10 A | 2010-10-29 | 36% | 23d | 45d | finish no earlier than 2010-10-29 |
| 62 | 7.11 | Final piping MTO list (DBI) RdO. / RdA. | 9d | 2010-09-20 | 2010-09-30 |  |  | 66d | start no earlier than 2010-09-20 |
| 63 | 7.12 | Final Piping MTO (DBI) procurement | 44d | 2010-09-30 | 2010-11-30 |  |  | 23d | start no earlier than 2010-09-30 |
| 64 | 7.13 | Special "Y" pieces (DBI), expansion joints etc., RdO. / RdA. | 10d | 2010-09-15 A | 2010-09-28 | 26% | 7.4d | 68d | finish no earlier than 2010-03-08 |
| 65 | 7.14 | Special "Y" pieces (DBI), expansion joint etc., construction | 44d | 2010-09-30 A | 2010-11-30 | 7% | 40.75d | 23d | finish no earlier than 2010-11-30 |
| 66 | 7.15 | Electric power distribution panel RdO. / RdA. | 43d | 2010-07-08 A | 2010-09-03 | 39% | 26.2d | 85d | finish no earlier than 2010-09-03 |
| 67 | 7.16 | Electric power distribution panel construction | 62d | 2010-09-06 A | 2010-11-30 | 42% | 36d | 23d | finish no earlier than 2010-11-30 |
| 68 | 7.17 | Instruments RdO | 53d | 2010-06-21 A | 2010-08-31 | 43% | 30d | 88d | finish no earlier than 2010-08-31 |
| 69 | 7.18 | Instruments RdA | 45d | 2010-07-01 A | 2010-08-31 | 18% | 37d | 88d | finish no earlier than 2010-08-31 |
| 70 | 7.19 | Instruments procurement | 100d | 2010-07-15 A | 2010-11-30 | 49% | 51.4d | 23d | finish no earlier than 2010-11-30 |
| 71 | 7.20 | CCS RdO. | 6d | 2010-07-05 A | 2010-07-12 A | 100% |  |  | finish no earlier than 2010-01-20 |
| 72 | 7.21 | CCS RdA. | 8d | 2010-07-12 A | 2010-07-21 A | 100% |  |  | start no earlier than 2010-01-21 |
| 73 | 7.22 | CCS Procurement | 90d | 2010-07-21 A | 2010-11-22 | 42% | 52.2d | 29d | finish no earlier than 2010-07-30 |
| 74 | 7.23 | Hook-up instrument materials RdO. / RdA. | 20d | 2010-08-31 | 2010-09-27 |  |  | 69d | finish no earlier than 2010-09-27 |
| 75 | 7.24 | Hook-up instrument materials procurement | 47d | 2010-09-27 | 2010-11-30 |  |  | 23d | start no earlier than 2010-09-27 |
| 76 | 7.25 | Ele/Inst Cables RdO-RdA | 13d | 2010-08-30 | 2010-09-15 |  |  | 77d | start no earlier than 2010-08-30 |
| 77 | 7.26 | Ele/Inst Cables Procurement | 35d | 2010-10-13 | 2010-11-30 |  |  | 23d | finish no earlier than 2010-11-30 |

| ID | WBS | Task | Duration | Start | Finish | Total slack | Constraint |
| --- | --- | --- | --- | --- | --- | --- | --- |
| 78 | 8 | **DOCUMENTATION FOR COMMISSIONING ACTIVITY** | 26d | 2010-11-01 | 2010-12-06 | 19d |  |
| 79 | 8.1 | Project technical book | 15d | 2010-11-16 | 2010-12-06 | 19d | start no earlier than 2010-11-16 |
| 80 | 8.2 | Operating manual | 15d | 2010-11-01 | 2010-11-19 | 30d | start no earlier than 2010-11-01 |
| 81 | 9 | **DELIVERY OPERATIONS** | 34d | 2010-11-16 | 2010-12-31 | 0d |  |
| 82 | 9.1 | Inspection & Packaging | 20d | 2010-11-16 | 2010-12-13 | 14d | finish no earlier than 2010-12-13 |
| 83 | 9.2 | Plant FOB Italian port delivery | 20d | 2010-12-06 | 2010-12-31 | 0d | finish no earlier than 2010-12-31 |
